How a schedule from MS Project changed from version to version. A marks actual dates.

## Version 1 (saved 2020-04-01, file 一研为定.mpp)

Note of the change: add

| ID | WBS | Task | Duration | Start | Finish | Predecessors | Complete | Constraint |
| --- | --- | --- | --- | --- | --- | --- | --- | --- |
| 1 | 1 | **启动** | 6d | 2020-03-19 A | 2020-03-26 |  | 100% |  |
| 2 |  | 任命项目经理 | 1d | 2020-03-19 A | 2020-03-19 A |  | 100% | as late as possible |
| 3 |  | 组建核心团队 | 1d | 2020-03-19 A | 2020-03-19 A |  | 100% | as late as possible |
| 4 |  | 制定里程碑计划 | 1d | 2020-03-19 A | 2020-03-19 A |  | 100% | as late as possible |
| 5 |  | 分析干系人 | 1d | 2020-03-19 A | 2020-03-19 A |  | 100% | as late as possible |
| 6 |  | 制定项目章程 | 1d | 2020-03-20 A | 2020-03-20 A | 2, 3, 4, 5 | 100% | as late as possible |
| 7 |  | 项目启动大会 | 1d | 2020-03-23 A | 2020-03-23 A | 6 | 100% | as late as possible |
| 8 | 2 | **规划** | 15d | 2020-03-24 A | 2020-04-13 A |  | 100% |  |
| 9 | 2.1 | **规划范围** | 4d | 2020-03-24 A | 2020-03-27 A |  | 100% |  |
| 10 |  | 制定需求说明书 | 1d | 2020-03-24 A | 2020-03-24 A | 7 | 100% | as late as possible |
| 11 |  | 界面设计 | 1d | 2020-03-25 A | 2020-03-25 A | 10 | 100% | as late as possible |
| 12 |  | 详细设计说明书 | 1d | 2020-03-25 A | 2020-03-25 A | 10 | 100% | as late as possible |
| 13 |  | 范围说明书 | 1d | 2020-03-25 A | 2020-03-25 A | 10 | 100% | as late as possible |
| 14 |  | 创建WBS | 1d | 2020-03-26 A | 2020-03-26 A | 11, 12, 13 | 100% | as late as possible |
| 15 |  | 形成范围基准 | 1d | 2020-03-27 A | 2020-03-27 A | 14 | 100% | as late as possible |
| 16 | 2.2 | **规划时间** | 5d | 2020-03-28 A | 2020-04-02 A |  | 100% |  |
| 17 |  | 排列工作包顺序 | 1d | 2020-03-28 A | 2020-03-28 A | 15 | 100% | as late as possible |
| 18 |  | 估算资源 | 1d | 2020-03-30 A | 2020-03-30 A | 17 | 100% | as late as possible |
| 19 |  | 估算持续时间 | 1d | 2020-03-31 A | 2020-03-31 A | 18 | 100% | as late as possible |
| 20 |  | 制定进度计划 | 1d | 2020-04-01 A | 2020-04-01 A | 19 | 100% | as late as possible |
| 21 |  | 形成进度基准 | 1d | 2020-04-02 A | 2020-04-02 A | 20 | 100% |  |
| 22 | 2.3 | **规划成本** | 3d | 2020-04-03 A | 2020-04-07 A |  | 100% |  |
| 23 |  | 项目成本估算 | 0d | 2020-04-03 A | 2020-04-03 A | 21 | 100% | as late as possible |
| 24 |  | 项目预算 | 1d | 2020-04-06 A | 2020-04-06 A | 23 | 100% | as late as possible |
| 25 |  | 形成范围基准 | 1d | 2020-04-07 A | 2020-04-07 A | 24 | 100% |  |
| 26 | 2.4 | **规划质量** | 2d | 2020-03-30 A | 2020-03-31 A |  | 100% |  |
| 27 |  | 制定测试计划 | 1d | 2020-03-30 A | 2020-03-30 A | 15 | 100% | as late as possible |
| 28 |  | 制定测试用例 | 1d | 2020-03-31 A | 2020-03-31 A | 27 | 100% | as late as possible |
| 29 | 2.5 | **规划人力资源** | 2d | 2020-03-31 A | 2020-04-01 A |  | 100% |  |
| 30 |  | 制定人力资源计划 | 1d | 2020-03-31 A | 2020-03-31 A | 18 | 100% | as late as possible |
| 31 |  | 制定人员配备管理计划 | 1d | 2020-04-01 A | 2020-04-01 A | 30 | 100% | as late as possible |
| 32 | 2.6 | **规划沟通** | 1d | 2020-04-02 A | 2020-04-02 A |  | 100% |  |
| 33 |  | 制定沟通管理计划 | 1d | 2020-04-02 A | 2020-04-02 A | 31 | 100% | as late as possible |
| 34 | 2.7 | **规划风险** | 4d | 2020-04-08 A | 2020-04-13 |  | 100% |  |
| 35 |  | 识别风险 | 1d | 2020-04-08 A | 2020-04-08 A | 16, 22, 26, 29 | 100% | as late as possible |
| 36 |  | 风险分析 | 1d | 2020-04-09 A | 2020-04-09 A | 35 | 100% | as late as possible |
| 37 |  | 制定风险登记册 | 1d | 2020-04-10 A | 2020-04-10 A | 36 | 100% | as late as possible |
| 38 |  | 规划整合 | 1d | 2020-04-13 A | 2020-04-13 A | 37 | 100% | as late as possible |
| 39 | 3 | **执行与监控** | 1d | 2020-04-14 A | 2020-04-14 |  | 100% |  |
| 40 |  | 组建项目团队 | 1d | 2020-04-14 A | 2020-04-14 A | 8 | 100% | as late as possible |
| 41 | 3.2 | **项目执行** | 6d | 2020-04-15 A | 2020-04-22 A |  | 100% |  |
| 42 | 3.2.1 | **用户模块** | 6d | 2020-04-15 A | 2020-04-22 A |  | 100% |  |
| 43 |  | 注册登录 | 1d | 2020-04-15 A | 2020-04-15 A | 40 | 100% | as late as possible |
| 44 |  | 院校专业查询 | 1d | 2020-04-16 A | 2020-04-16 A | 43 | 100% | as late as possible |
| 45 |  | 每日打卡 | 1d | 2020-04-17 A | 2020-04-17 A | 43 | 100% | as late as possible |
| 46 |  | 考研自习室 | 1d | 2020-04-17 A | 2020-04-17 A | 43 | 100% | as late as possible |
| 47 |  | 考研资料库 | 1d | 2020-04-20 A | 2020-04-20 A | 46 | 100% | as late as possible |
| 48 |  | 用户答疑 | 1d | 2020-04-20 A | 2020-04-20 A | 46 | 100% | as late as possible |
| 49 |  | 网课学习 | 1d | 2020-04-20 A | 2020-04-20 A | 46 | 100% | as late as possible |
| 50 |  | 社区文章 | 1d | 2020-04-21 A | 2020-04-21 A | 43 | 100% | as late as possible |
| 51 |  | 社区问答 | 1d | 2020-04-21 A | 2020-04-21 A | 43 | 100% | as late as possible |
| 52 |  | 添加文章问答 | 1d | 2020-04-21 A | 2020-04-21 A | 50, 51 | 100% |  |
| 53 |  | 文章问答回复 | 1d | 2020-04-21 A | 2020-04-21 A | 50, 51 | 100% | as late as possible |
| 54 |  | 个人中心信息 | 1d | 2020-04-22 A | 2020-04-22 A | 53 | 100% | as late as possible |
| 55 |  | 个人数据 | 1d | 2020-04-22 A | 2020-04-22 A | 54 | 100% | as late as possible |
| 56 | 3.2.2 | **管理员模块** | 2d | 2020-04-15 A | 2020-04-16 A |  | 100% |  |
| 57 |  | 数据分析 | 2d | 2020-04-15 A | 2020-04-16 A | 40 | 100% | as late as possible |
| 58 |  | 信息资料收集 | 2d | 2020-04-15 A | 2020-04-16 A | 40 | 100% | as late as possible |
| 59 | 3.3 | **项目监控** | 3d | 2020-04-15 A | 2020-04-17 A |  | 100% |  |
| 60 |  | 各项指标监控 | 1d | 2020-04-15 A | 2020-04-15 A | 40 | 100% | as late as possible |
| 61 |  | 监控评审 | 1d | 2020-04-16 A | 2020-04-16 A | 60 | 100% | as late as possible |
| 62 |  | 变更评审 | 1d | 2020-04-17 A | 2020-04-17 A | 61 | 100% | as late as possible |
| 63 |  | 例会 | 1d | 2020-04-15 A | 2020-04-15 A | 40 | 100% | as late as possible |
| 64 | 3.4 | **管理干系人** | 1d | 2020-04-15 A | 2020-04-15 A |  | 100% |  |
| 65 |  | 发布项目信息 | 1d | 2020-04-15 A | 2020-04-15 A | 40 | 100% | as late as possible |
| 66 |  | 报告监控指标 | 1d | 2020-04-15 A | 2020-04-15 A | 40 | 100% | as late as possible |
| 67 |  | 干系人沟通 | 1d | 2020-04-15 A | 2020-04-15 A | 40 | 100% | as late as possible |
| 68 | 3.5 | **团队建设** | 2d | 2020-04-15 A | 2020-04-16 |  | 100% |  |
| 69 |  | 培训 | 1d | 2020-04-15 A | 2020-04-15 A | 40 | 100% | as late as possible |
| 70 |  | 娱乐活动 | 1d | 2020-04-15 A | 2020-04-15 A | 40 | 100% | as late as possible |

| ID | WBS | Task | Duration | Start | Finish | Predecessors | Complete | Constraint |
| --- | --- | --- | --- | --- | --- | --- | --- | --- |
| 71 |  | 沟通 | 1d | 2020-04-15 A | 2020-04-15 A | 40 | 100% | as late as possible |
| 72 |  | 项目验收 | 1d | 2020-04-27 A | 2020-04-27 A | 41 | 100% | as late as possible |
| 73 | 4 | **收尾** | 1d | 2020-04-28 A | 2020-04-28 A |  | 100% |  |
| 74 |  | 项目终检 | 1d | 2020-04-28 A | 2020-04-28 A | 72 | 100% | as late as possible |
| 75 |  | 项目内部收尾 | 1d | 2020-04-28 A | 2020-04-28 A | 72 | 100% | as late as possible |

## Version 2 (saved 2020-04-08, file 一研为定-范围规划.mpp)

Note of the change: update ls

Last finish 2020-04-28 → 2020-04-21 (-7d). Complete tasks 58 → 0.

Changed:

| ID | Task | Start | Finish | Duration | Complete | Predecessors | Other |
| --- | --- | --- | --- | --- | --- | --- | --- |
| 1 | **启动** | 2020-03-19 A → 2020-04-01 (+13d) | 2020-03-26 → 2020-04-08 (+13d) | 6d → 6d? | 100% → 0% |  |  |
| 2 | 任命项目经理 | 2020-03-19 A → 2020-03-19 | 2020-03-19 A → 2020-03-19 | 1d → 1d? | 100% → 0% |  | resources 产品经理 → none |
| 3 | 组建核心团队 | 2020-03-19 A → 2020-03-19 | 2020-03-19 A → 2020-03-19 | 1d → 1d? | 100% → 0% |  | resources UI专家; 测试员1; 测试员2; 产品经理; 程序员1; 程序员2; 程序员3; 程序员4; 程序员5; 设计专家; 项目经理; 需求专家; 质量专家 → none |
| 4 | 制定里程碑计划 | 2020-03-19 A → 2020-03-19 | 2020-03-19 A → 2020-03-19 | 1d → 1d? | 100% → 0% |  | resources 产品经理; 项目经理 → none |
| 5 | 分析干系人 | 2020-03-19 A → 2020-03-19 | 2020-03-19 A → 2020-03-19 | 1d → 1d? | 100% → 0% |  | resources 产品经理; 项目经理 → none |
| 6 | 制定项目章程 | 2020-03-20 A → 2020-03-19 (-1d) | 2020-03-20 A → 2020-03-19 (-1d) | 1d → 1d? | 100% → 0% | 2, 3, 4, 5 → none | resources 产品经理; 项目经理 → none |
| 7 | 项目启动大会 | 2020-03-23 A → 2020-03-19 (-4d) | 2020-03-23 A → 2020-03-19 (-4d) | 1d → 1d? | 100% → 0% | 6 → none | resources 产品经理; 项目经理; 需求专家 → none |
| 8 | **规划** | 2020-03-24 A → 2020-04-01 (+8d) | 2020-04-13 A → 2020-04-21 (+8d) | 15d → 15d? | 100% → 0% |  |  |
| 9 | **规划范围** | 2020-03-24 A → 2020-03-19 (-5d) | 2020-03-27 A → 2020-03-24 (-3d) | 4d → 4d? | 100% → 0% |  |  |
| 10 | 制定需求说明书 | 2020-03-24 A → 2020-03-19 (-5d) | 2020-03-24 A → 2020-03-19 (-5d) | 1d → 1d? | 100% → 0% | 7 → none | resources 需求专家 → none |
| 11 | 界面设计 | 2020-03-25 A → 2020-03-19 (-6d) | 2020-03-25 A → 2020-03-19 (-6d) | 1d → 1d? | 100% → 0% | 10 → none | resources UI专家; 设计专家 → none |
| 12 | 详细设计说明书 | 2020-03-25 A → 2020-03-19 (-6d) | 2020-03-25 A → 2020-03-19 (-6d) | 1d → 1d? | 100% → 0% | 10 → none | resources 设计专家 → none |
| 13 | 范围说明书 | 2020-03-25 A → 2020-03-19 (-6d) | 2020-03-25 A → 2020-03-19 (-6d) | 1d → 1d? | 100% → 0% | 10 → none | resources 项目经理 → none |
| 14 | 创建WBS | 2020-03-26 A → 2020-03-19 (-7d) | 2020-03-26 A → 2020-03-19 (-7d) | 1d → 1d? | 100% → 0% | 11, 12, 13 → none | resources 项目经理 → none |
| 15 | 形成范围基准 | 2020-03-27 A → 2020-03-19 (-8d) | 2020-03-27 A → 2020-03-19 (-8d) | 1d → 1d? | 100% → 0% | 14 → none | resources 项目经理 → none |
| 16 | **规划时间** | 2020-03-28 A → 2020-03-19 (-9d) | 2020-04-02 A → 2020-03-25 (-8d) | 5d → 5d? | 100% → 0% |  |  |
| 17 | 排列工作包顺序 | 2020-03-28 A → 2020-03-19 (-9d) | 2020-03-28 A → 2020-03-19 (-9d) | 1d → 1d? | 100% → 0% | 15 → none | resources 项目经理 → none |
| 18 | 估算资源 | 2020-03-30 A → 2020-03-19 (-11d) | 2020-03-30 A → 2020-03-19 (-11d) | 1d → 1d? | 100% → 0% | 17 → none | resources 项目经理 → none |
| 19 | 估算持续时间 | 2020-03-31 A → 2020-03-19 (-12d) | 2020-03-31 A → 2020-03-19 (-12d) | 1d → 1d? | 100% → 0% | 18 → none | resources 项目经理 → none |
| 20 | 制定进度计划 | 2020-04-01 A → 2020-03-19 (-13d) | 2020-04-01 A → 2020-03-19 (-13d) | 1d → 1d? | 100% → 0% | 19 → none | resources 项目经理 → none |
| 21 | 形成进度基准 | 2020-04-02 A → 2020-03-19 (-14d) | 2020-04-02 A → 2020-03-19 (-14d) | 1d → 1d? | 100% → 0% | 20 → none | resources 项目经理 → none |
| 22 | **规划成本** | 2020-04-03 A → 2020-03-19 (-15d) | 2020-04-07 A → 2020-03-23 (-15d) | 3d → 3d? | 100% → 0% |  |  |
| 23 | 项目成本估算 | 2020-04-03 A → 2020-03-19 (-15d) | 2020-04-03 A → 2020-03-20 (-14d) | 0d → 1d? | 100% → 0% | 21 → none | resources 项目经理 → none |
| 24 | 项目预算 | 2020-04-06 A → 2020-03-19 (-18d) | 2020-04-06 A → 2020-03-19 (-18d) | 1d → 1d? | 100% → 0% | 23 → none | resources 项目经理 → none |
| 25 | 形成范围基准 | 2020-04-07 A → 2020-03-19 (-19d) | 2020-04-07 A → 2020-03-19 (-19d) | 1d → 1d? | 100% → 0% | 24 → none | resources 项目经理 → none |
| 26 | **规划质量** | 2020-03-30 A → 2020-03-19 (-11d) | 2020-03-31 A → 2020-03-20 (-11d) | 2d → 2d? | 100% → 0% |  |  |
| 27 | 制定测试计划 | 2020-03-30 A → 2020-03-19 (-11d) | 2020-03-30 A → 2020-03-19 (-11d) | 1d → 1d? | 100% → 0% | 15 → none | resources 质量专家 → none |
| 28 | 制定测试用例 | 2020-03-31 A → 2020-03-19 (-12d) | 2020-03-31 A → 2020-03-19 (-12d) | 1d → 1d? | 100% → 0% | 27 → none | resources 质量专家 → none |
| 29 | **规划人力资源** | 2020-03-31 A → 2020-03-19 (-12d) | 2020-04-01 A → 2020-03-20 (-12d) | 2d → 2d? | 100% → 0% |  |  |
| 30 | 制定人力资源计划 | 2020-03-31 A → 2020-03-19 (-12d) | 2020-03-31 A → 2020-03-19 (-12d) | 1d → 1d? | 100% → 0% | 18 → none | resources 项目经理 → none |
| 31 | 制定人员配备管理计划 | 2020-04-01 A → 2020-03-19 (-13d) | 2020-04-01 A → 2020-03-19 (-13d) | 1d → 1d? | 100% → 0% | 30 → none | resources 项目经理 → none |
| 32 | **规划沟通** | 2020-04-02 A → 2020-03-19 (-14d) | 2020-04-02 A → 2020-03-19 (-14d) | 1d → 1d? | 100% → 0% |  |  |
| 33 | 制定沟通管理计划 | 2020-04-02 A → 2020-03-19 (-14d) | 2020-04-02 A → 2020-03-19 (-14d) | 1d → 1d? | 100% → 0% | 31 → none | resources 项目经理 → none |
| 34 | **规划风险** | 2020-04-08 A → 2020-03-19 (-20d) | 2020-04-13 → 2020-03-24 (-20d) | 4d → 4d? | 100% → 0% |  |  |
| 35 | 识别风险 | 2020-04-08 A → 2020-03-19 (-20d) | 2020-04-08 A → 2020-03-19 (-20d) | 1d → 1d? | 100% → 0% | 16, 22, 26, 29 → none | resources 项目经理 → none |
| 36 | 风险分析 | 2020-04-09 A → 2020-03-19 (-21d) | 2020-04-09 A → 2020-03-19 (-21d) | 1d → 1d? | 100% → 0% | 35 → none | resources 项目经理 → none |
| 37 | 制定风险登记册 | 2020-04-10 A → 2020-03-19 (-22d) | 2020-04-10 A → 2020-03-19 (-22d) | 1d → 1d? | 100% → 0% | 36 → none | resources 项目经理 → none |
| 38 | 规划整合 | 2020-04-13 A → 2020-03-19 (-25d) | 2020-04-13 A → 2020-03-19 (-25d) | 1d → 1d? | 100% → 0% | 37 → none | resources 项目经理 → none |
| 39 | **执行与监控** | 2020-04-14 A → 2020-04-01 (-13d) | 2020-04-14 → 2020-04-01 (-13d) | 1d → 1d? | 100% → 0% |  |  |
| 40 | 组建项目团队 | 2020-04-14 A → 2020-03-19 (-26d) | 2020-04-14 A → 2020-03-19 (-26d) | 1d → 1d? | 100% → 0% | 8 → none | resources UI专家; 测试员1; 测试员2; 产品经理; 程序员1; 程序员2; 程序员3; 程序员4; 程序员5; 设计专家; 项目经理; 需求专家; 质量专家 → none |
| 41 | **项目执行** | 2020-04-15 A → 2020-03-19 (-27d) | 2020-04-22 A → 2020-03-26 (-27d) | 6d → 6d? | 100% → 0% |  |  |
| 42 | **用户模块** | 2020-04-15 A → 2020-03-19 (-27d) | 2020-04-22 A → 2020-03-26 (-27d) | 6d → 6d? | 100% → 0% |  |  |
| 43 | 注册登录 | 2020-04-15 A → 2020-03-19 (-27d) | 2020-04-15 A → 2020-03-19 (-27d) | 1d → 1d? | 100% → 0% | 40 → none | resources 程序员1 → none |
| 44 | 院校专业查询 | 2020-04-16 A → 2020-03-19 (-28d) | 2020-04-16 A → 2020-03-19 (-28d) | 1d → 1d? | 100% → 0% | 43 → none | resources 程序员2 → none |
| 45 | 每日打卡 | 2020-04-17 A → 2020-03-19 (-29d) | 2020-04-17 A → 2020-03-19 (-29d) | 1d → 1d? | 100% → 0% | 43 → none | resources 程序员3 → none |
| 46 | 考研自习室 | 2020-04-17 A → 2020-03-19 (-29d) | 2020-04-17 A → 2020-03-19 (-29d) | 1d → 1d? | 100% → 0% |  | resources 程序员3 → none |
| 47 | 考研资料库 | 2020-04-20 A → 2020-03-19 (-32d) | 2020-04-20 A → 2020-03-19 (-32d) | 1d → 1d? | 100% → 0% |  | resources 程序员4 → none |
| 48 | 用户答疑 | 2020-04-20 A → 2020-03-19 (-32d) | 2020-04-20 A → 2020-03-19 (-32d) | 1d → 1d? | 100% → 0% |  | resources 程序员4 → none |
| 49 | 网课学习 | 2020-04-20 A → 2020-03-19 (-32d) | 2020-04-20 A → 2020-03-19 (-32d) | 1d → 1d? | 100% → 0% |  | resources 程序员4 → none |
| 50 | 社区文章 | 2020-04-21 A → 2020-03-19 (-33d) | 2020-04-21 A → 2020-03-19 (-33d) | 1d → 1d? | 100% → 0% |  | resources 程序员5 → none |
| 51 | 社区问答 | 2020-04-21 A → 2020-03-19 (-33d) | 2020-04-21 A → 2020-03-19 (-33d) | 1d → 1d? | 100% → 0% |  | resources 程序员5 → none |
| 52 | 添加文章问答 | 2020-04-21 A → 2020-03-19 (-33d) | 2020-04-21 A → 2020-03-19 (-33d) | 1d → 1d? | 100% → 0% |  | resources 程序员5 → none |
| 53 | 文章问答回复 | 2020-04-21 A → 2020-03-19 (-33d) | 2020-04-21 A → 2020-03-19 (-33d) | 1d → 1d? | 100% → 0% | 50, 51 → 51 | resources 程序员5 → none |
| 54 | 个人中心信息 | 2020-04-22 A → 2020-03-19 (-34d) | 2020-04-22 A → 2020-03-19 (-34d) | 1d → 1d? | 100% → 0% | 53 → none | resources 程序员1 → none |
| 55 | 个人数据 | 2020-04-22 A → 2020-03-19 (-34d) | 2020-04-22 A → 2020-03-19 (-34d) | 1d → 1d? | 100% → 0% | 54 → none | resources 程序员1 → none |
| 56 | **管理员模块** | 2020-04-15 A → 2020-03-19 (-27d) | 2020-04-16 A → 2020-03-20 (-27d) | 2d → 2d? | 100% → 0% |  |  |
| 57 | 数据分析 | 2020-04-15 A → 2020-03-19 (-27d) | 2020-04-16 A → 2020-03-20 (-27d) | 2d → 2d? | 100% → 0% | 40 → none | resources 程序员1 → none |
| 58 | 信息资料收集 | 2020-04-15 A → 2020-03-19 (-27d) | 2020-04-16 A → 2020-03-20 (-27d) | 2d → 2d? | 100% → 0% | 40 → none | resources 程序员1 → none |
| 59 | **项目监控** | 2020-04-15 A → 2020-03-19 (-27d) | 2020-04-17 A → 2020-03-23 (-25d) | 3d → 3d? | 100% → 0% |  |  |
| 60 | 各项指标监控 | 2020-04-15 A → 2020-03-19 (-27d) | 2020-04-15 A → 2020-03-19 (-27d) | 1d → 1d? | 100% → 0% | 40 → none | resources 测试员1; 产品经理; 项目经理 → none |
| 61 | 监控评审 | 2020-04-16 A → 2020-03-19 (-28d) | 2020-04-16 A → 2020-03-19 (-28d) | 1d → 1d? | 100% → 0% | 60 → none | resources 设计专家; 项目经理 → none |
| 62 | 变更评审 | 2020-04-17 A → 2020-03-19 (-29d) | 2020-04-17 A → 2020-03-19 (-29d) | 1d → 1d? | 100% → 0% | 61 → none | resources 设计专家; 项目经理 → none |
| 63 | 例会 | 2020-04-15 A → 2020-03-19 (-27d) | 2020-04-15 A → 2020-03-19 (-27d) | 1d → 1d? | 100% → 0% | 40 → none | resources UI专家; 测试员1; 测试员2; 产品经理; 程序员1; 程序员2; 程序员3; 程序员4; 程序员5; 设计专家; 项目经理; 需求专家; 质量专家 → none |
| 64 | **管理干系人** | 2020-04-15 A → 2020-03-19 (-27d) | 2020-04-15 A → 2020-03-19 (-27d) | 1d → 1d? | 100% → 0% |  |  |
| 65 | 发布项目信息 | 2020-04-15 A → 2020-03-19 (-27d) | 2020-04-15 A → 2020-03-19 (-27d) | 1d → 1d? | 100% → 0% | 40 → none | resources 项目经理 → none |
| 66 | 报告监控指标 | 2020-04-15 A → 2020-03-19 (-27d) | 2020-04-15 A → 2020-03-19 (-27d) | 1d → 1d? | 100% → 0% | 40 → none | resources 项目经理 → none |
| 67 | 干系人沟通 | 2020-04-15 A → 2020-03-19 (-27d) | 2020-04-15 A → 2020-03-19 (-27d) | 1d → 1d? | 100% → 0% | 40 → none | resources 项目经理 → none |
| 68 | **团队建设** | 2020-04-15 A → 2020-03-19 (-27d) | 2020-04-16 → 2020-03-20 (-27d) | 2d → 2d? | 100% → 0% |  |  |
| 69 | 培训 | 2020-04-15 A → 2020-03-19 (-27d) | 2020-04-15 A → 2020-03-19 (-27d) | 1d → 1d? | 100% → 0% | 40 → none | resources UI专家; 测试员1; 测试员2; 程序员1; 程序员2; 程序员3; 程序员4; 程序员5; 设计专家; 需求专家; 质量专家 → none |
| 70 | 娱乐活动 | 2020-04-15 A → 2020-03-19 (-27d) | 2020-04-15 A → 2020-03-19 (-27d) | 1d → 1d? | 100% → 0% | 40 → none | resources UI专家; 测试员1; 测试员2; 产品经理; 程序员1; 程序员2; 程序员3; 程序员5; 设计专家; 项目经理; 需求专家; 质量专家 → none |

| ID | Task | Start | Finish | Duration | Complete | Predecessors | Other |
| --- | --- | --- | --- | --- | --- | --- | --- |
| 71 | 沟通 | 2020-04-15 A → 2020-03-19 (-27d) | 2020-04-15 A → 2020-03-19 (-27d) | 1d → 1d? | 100% → 0% | 40 → none | resources UI专家; 测试员1; 测试员2; 产品经理; 程序员1; 程序员2; 程序员3; 程序员4; 程序员5; 设计专家; 项目经理; 需求专家; 质量专家 → none |
| 72 | 项目验收 | 2020-04-27 A → 2020-03-19 (-39d) | 2020-04-27 A → 2020-03-19 (-39d) | 1d → 1d? | 100% → 0% | 41 → none | resources UI专家; 产品经理; 设计专家; 项目经理; 需求专家; 质量专家 → none |
| 73 | **收尾** | 2020-04-28 A → 2020-04-01 (-27d) | 2020-04-28 A → 2020-04-01 (-27d) | 1d → 1d? | 100% → 0% |  |  |
| 74 | 项目终检 | 2020-04-28 A → 2020-03-19 (-40d) | 2020-04-28 A → 2020-03-19 (-40d) | 1d → 1d? | 100% → 0% | 72 → none | resources UI专家; 产品经理; 设计专家; 项目经理; 需求专家; 质量专家 → none |
| 75 | 项目内部收尾 | 2020-04-28 A → 2020-03-19 (-40d) | 2020-04-28 A → 2020-03-19 (-40d) | 1d → 1d? | 100% → 0% | 72 → none | resources UI专家; 测试员1; 产品经理; 设计专家; 项目经理; 需求专家; 质量专家 → none |

## Version 3 (saved 2020-04-08, file 一研为定-时间规划.mpp)

Note of the change: add

Last finish 2020-04-21 → 2020-05-12 (+21d). Complete tasks 0 → 58.

Changed:

| ID | Task | Start | Finish | Duration | Complete | Predecessors | Other |
| --- | --- | --- | --- | --- | --- | --- | --- |
| 1 | **启动** | 2020-04-01 → 2020-03-19 A (-13d) | 2020-04-08 → 2020-03-26 (-13d) | 6d? → 6d | 0% → 100% |  |  |
| 2 | 任命项目经理 | 2020-03-19 A | 2020-03-19 A | 1d? → 1d | 0% → 100% |  | resources none → 产品经理 |
| 3 | 组建核心团队 | 2020-03-19 A | 2020-03-19 A | 1d? → 1d | 0% → 100% |  | resources none → UI专家; 测试员1; 测试员2; 产品经理; 程序员1; 程序员2; 程序员3; 程序员4; 程序员5; 设计专家; 项目经理; 需求专家; 质量专家 |
| 4 | 制定里程碑计划 | 2020-03-19 A | 2020-03-19 A | 1d? → 1d | 0% → 100% |  | resources none → 产品经理; 项目经理 |
| 5 | 分析干系人 | 2020-03-19 A | 2020-03-19 A | 1d? → 1d | 0% → 100% |  | resources none → 产品经理; 项目经理 |
| 6 | 制定项目章程 | 2020-03-19 → 2020-03-20 A (+1d) | 2020-03-19 → 2020-03-20 A (+1d) | 1d? → 1d | 0% → 100% | none → 2, 3, 4, 5 | resources none → 产品经理; 项目经理 |
| 7 | 项目启动大会 | 2020-03-19 → 2020-03-23 A (+4d) | 2020-03-19 → 2020-03-23 A (+4d) | 1d? → 1d | 0% → 100% | none → 6 | resources none → 产品经理; 项目经理; 需求专家 |
| 8 | **规划** | 2020-04-01 → 2020-03-24 A (-8d) | 2020-04-21 → 2020-04-13 A (-8d) | 15d? → 15d | 0% → 100% |  |  |
| 9 | **规划范围** | 2020-03-19 → 2020-03-24 A (+5d) | 2020-03-24 → 2020-03-27 A (+3d) | 4d? → 4d | 0% → 100% |  |  |
| 10 | 制定需求说明书 | 2020-03-19 → 2020-03-24 A (+5d) | 2020-03-19 → 2020-03-24 A (+5d) | 1d? → 1d | 0% → 100% | none → 7 | resources none → 需求专家 |
| 11 | 界面设计 | 2020-03-19 → 2020-03-25 A (+6d) | 2020-03-19 → 2020-03-25 A (+6d) | 1d? → 1d | 0% → 100% | none → 10 | resources none → UI专家; 设计专家 |
| 12 | 详细设计说明书 | 2020-03-19 → 2020-03-25 A (+6d) | 2020-03-19 → 2020-03-25 A (+6d) | 1d? → 1d | 0% → 100% | none → 10 | resources none → 设计专家 |
| 13 | 范围说明书 | 2020-03-19 → 2020-03-25 A (+6d) | 2020-03-19 → 2020-03-25 A (+6d) | 1d? → 1d | 0% → 100% | none → 10 | resources none → 项目经理 |
| 14 | 创建WBS | 2020-03-19 → 2020-03-26 A (+7d) | 2020-03-19 → 2020-03-26 A (+7d) | 1d? → 1d | 0% → 100% | none → 11, 12, 13 | resources none → 项目经理 |
| 15 | 形成范围基准 | 2020-03-19 → 2020-03-27 A (+8d) | 2020-03-19 → 2020-03-27 A (+8d) | 1d? → 1d | 0% → 100% | none → 14 | resources none → 项目经理 |
| 16 | **规划时间** | 2020-03-19 → 2020-03-28 (+9d) | 2020-03-25 → 2020-04-02 A (+8d) | 5d? → 5d | 0% → 100% |  |  |
| 17 | 排列工作包顺序 | 2020-03-19 → 2020-03-30 A (+11d) | 2020-03-19 → 2020-03-31 A (+12d) | 1d? → 1d | 0% → 100% | none → 15 | constraint as late as possible → none; resources none → 项目经理 |
| 18 | 估算资源 | 2020-03-19 → 2020-03-30 A (+11d) | 2020-03-19 → 2020-03-30 A (+11d) | 1d? → 1d | 0% → 100% | none → 17 | resources none → 项目经理 |
| 19 | 估算持续时间 | 2020-03-19 → 2020-03-31 A (+12d) | 2020-03-19 → 2020-03-31 A (+12d) | 1d? → 1d | 0% → 100% | none → 18 | resources none → 项目经理 |
| 20 | 制定进度计划 | 2020-03-19 → 2020-04-01 A (+13d) | 2020-03-19 → 2020-04-01 A (+13d) | 1d? → 1d | 0% → 100% | none → 19 | resources none → 项目经理 |
| 21 | 形成进度基准 | 2020-03-19 → 2020-04-02 A (+14d) | 2020-03-19 → 2020-04-02 A (+14d) | 1d? → 1d | 0% → 100% | none → 20 | resources none → 项目经理 |
| 22 | **规划成本** | 2020-03-19 → 2020-04-03 A (+15d) | 2020-03-23 → 2020-04-07 A (+15d) | 3d? → 3d | 0% → 100% |  |  |
| 23 | 项目成本估算 | 2020-03-19 → 2020-04-03 A (+15d) | 2020-03-20 → 2020-04-03 A (+14d) | 1d? → 0d | 0% → 100% | none → 21 | resources none → 项目经理 |
| 24 | 项目预算 | 2020-03-19 → 2020-04-06 A (+18d) | 2020-03-19 → 2020-04-06 A (+18d) | 1d? → 1d | 0% → 100% | none → 23 | resources none → 项目经理 |
| 25 | 形成范围基准 | 2020-03-19 → 2020-04-07 A (+19d) | 2020-03-19 → 2020-04-07 A (+19d) | 1d? → 1d | 0% → 100% | none → 24 | resources none → 项目经理 |
| 26 | **规划质量** | 2020-03-19 → 2020-03-30 A (+11d) | 2020-03-20 → 2020-03-31 A (+11d) | 2d? → 2d | 0% → 100% |  |  |
| 27 | 制定测试计划 | 2020-03-19 → 2020-03-30 A (+11d) | 2020-03-19 → 2020-03-30 A (+11d) | 1d? → 1d | 0% → 100% | none → 15 | resources none → 质量专家 |
| 28 | 制定测试用例 | 2020-03-19 → 2020-03-31 A (+12d) | 2020-03-19 → 2020-03-31 A (+12d) | 1d? → 1d | 0% → 100% | none → 27 | resources none → 质量专家 |
| 29 | **规划人力资源** | 2020-03-19 → 2020-03-31 A (+12d) | 2020-03-20 → 2020-04-01 A (+12d) | 2d? → 2d | 0% → 100% |  |  |
| 30 | 制定人力资源计划 | 2020-03-19 → 2020-03-31 A (+12d) | 2020-03-19 → 2020-03-31 A (+12d) | 1d? → 1d | 0% → 100% | none → 18 | resources none → 项目经理 |
| 31 | 制定人员配备管理计划 | 2020-03-19 → 2020-04-01 A (+13d) | 2020-03-19 → 2020-04-01 A (+13d) | 1d? → 1d | 0% → 100% | none → 30 | resources none → 项目经理 |
| 32 | **规划沟通** | 2020-03-19 → 2020-04-02 A (+14d) | 2020-03-19 → 2020-04-02 A (+14d) | 1d? → 1d | 0% → 100% |  |  |
| 33 | 制定沟通管理计划 | 2020-03-19 → 2020-04-02 A (+14d) | 2020-03-19 → 2020-04-02 A (+14d) | 1d? → 1d | 0% → 100% | none → 31 | resources none → 项目经理 |
| 34 | **规划风险** | 2020-03-19 → 2020-04-08 A (+20d) | 2020-03-24 → 2020-04-13 (+20d) | 4d? → 4d | 0% → 100% |  |  |
| 35 | 识别风险 | 2020-03-19 → 2020-04-08 A (+20d) | 2020-03-19 → 2020-04-08 A (+20d) | 1d? → 1d | 0% → 100% | none → 16, 22, 26, 29 | resources none → 项目经理 |
| 36 | 风险分析 | 2020-03-19 → 2020-04-09 A (+21d) | 2020-03-19 → 2020-04-09 A (+21d) | 1d? → 1d | 0% → 100% | none → 35 | resources none → 项目经理 |
| 37 | 制定风险登记册 | 2020-03-19 → 2020-04-10 A (+22d) | 2020-03-19 → 2020-04-10 A (+22d) | 1d? → 1d | 0% → 100% | none → 36 | resources none → 项目经理 |
| 38 | 规划整合 | 2020-03-19 → 2020-04-13 A (+25d) | 2020-03-19 → 2020-04-13 A (+25d) | 1d? → 1d | 0% → 100% | none → 37 | resources none → 项目经理 |
| 39 | **执行与监控** | 2020-04-01 → 2020-04-14 A (+13d) | 2020-04-01 → 2020-05-07 A (+36d) | 1d? → 18d | 0% → 100% |  |  |
| 40 | 组建项目团队 | 2020-03-19 → 2020-04-14 A (+26d) | 2020-03-19 → 2020-04-14 A (+26d) | 1d? → 1d | 0% → 100% | none → 8 | resources none → UI专家; 测试员1; 测试员2; 产品经理; 程序员1; 程序员2; 程序员3; 程序员4; 程序员5; 设计专家; 项目经理; 需求专家; 质量专家 |
| 41 | **项目执行** | 2020-03-19 → 2020-04-15 A (+27d) | 2020-03-26 → 2020-04-22 A (+27d) | 6d? → 6d | 0% → 100% |  |  |
| 42 | **用户模块** | 2020-03-19 → 2020-04-15 A (+27d) | 2020-03-26 → 2020-04-22 A (+27d) | 6d? → 6d | 0% → 100% |  |  |
| 43 | 注册登录 | 2020-03-19 → 2020-04-15 A (+27d) | 2020-03-19 → 2020-04-15 A (+27d) | 1d? → 1d | 0% → 100% | none → 40 | resources none → 程序员1 |
| 44 | 院校专业查询 | 2020-03-19 → 2020-04-16 A (+28d) | 2020-03-19 → 2020-04-16 A (+28d) | 1d? → 1d | 0% → 100% | none → 43 | resources none → 程序员2 |
| 45 | 每日打卡 | 2020-03-19 → 2020-04-17 A (+29d) | 2020-03-19 → 2020-04-17 A (+29d) | 1d? → 1d | 0% → 100% | none → 43 | resources none → 程序员3 |
| 46 | 考研自习室 | 2020-03-19 → 2020-04-17 A (+29d) | 2020-03-19 → 2020-04-17 A (+29d) | 1d? → 1d | 0% → 100% |  | resources none → 程序员3 |
| 47 | 考研资料库 | 2020-03-19 → 2020-04-20 A (+32d) | 2020-03-19 → 2020-04-20 A (+32d) | 1d? → 1d | 0% → 100% |  | resources none → 程序员4 |
| 48 | 用户答疑 | 2020-03-19 → 2020-04-20 A (+32d) | 2020-03-19 → 2020-04-20 A (+32d) | 1d? → 1d | 0% → 100% |  | resources none → 程序员4 |
| 49 | 网课学习 | 2020-03-19 → 2020-04-20 A (+32d) | 2020-03-19 → 2020-04-20 A (+32d) | 1d? → 1d | 0% → 100% |  | resources none → 程序员4 |
| 50 | 社区文章 | 2020-03-19 → 2020-04-21 A (+33d) | 2020-03-19 → 2020-04-21 A (+33d) | 1d? → 1d | 0% → 100% |  | resources none → 程序员5 |
| 51 | 社区问答 | 2020-03-19 → 2020-04-21 A (+33d) | 2020-03-19 → 2020-04-21 A (+33d) | 1d? → 1d | 0% → 100% |  | resources none → 程序员5 |
| 52 | 添加文章问答 | 2020-03-19 → 2020-04-21 A (+33d) | 2020-03-19 → 2020-04-21 A (+33d) | 1d? → 1d | 0% → 100% |  | resources none → 程序员5 |
| 53 | 文章问答回复 | 2020-03-19 → 2020-04-21 A (+33d) | 2020-03-19 → 2020-04-21 A (+33d) | 1d? → 1d | 0% → 100% | 51 → 50, 51 | resources none → 程序员5 |
| 54 | 个人中心信息 | 2020-03-19 → 2020-04-22 A (+34d) | 2020-03-19 → 2020-04-22 A (+34d) | 1d? → 1d | 0% → 100% | none → 53 | resources none → 程序员1 |
| 55 | 个人数据 | 2020-03-19 → 2020-04-22 A (+34d) | 2020-03-19 → 2020-04-22 A (+34d) | 1d? → 1d | 0% → 100% | none → 54 | resources none → 程序员1 |
| 56 | **管理员模块** | 2020-03-19 → 2020-04-15 A (+27d) | 2020-03-20 → 2020-04-16 A (+27d) | 2d? → 2d | 0% → 100% |  |  |
| 57 | 数据分析 | 2020-03-19 → 2020-04-15 A (+27d) | 2020-03-20 → 2020-04-16 A (+27d) | 2d? → 2d | 0% → 100% | none → 40 | resources none → 程序员1 |
| 58 | 信息资料收集 | 2020-03-19 → 2020-04-15 A (+27d) | 2020-03-20 → 2020-04-16 A (+27d) | 2d? → 2d | 0% → 100% | none → 40 | resources none → 程序员1 |
| 59 | **项目监控** | 2020-03-19 → 2020-04-23 A (+35d) | 2020-03-23 → 2020-04-28 A (+36d) | 3d? → 4d | 0% → 100% |  |  |
| 60 | 各项指标监控 | 2020-03-19 → 2020-04-23 A (+35d) | 2020-03-19 → 2020-04-23 A (+35d) | 1d? → 1d | 0% → 100% | none → 40 | resources none → 测试员1; 产品经理; 项目经理 |
| 61 | 监控评审 | 2020-03-19 → 2020-04-24 A (+36d) | 2020-03-19 → 2020-04-24 A (+36d) | 1d? → 1d | 0% → 100% | none → 60 | resources none → 设计专家; 项目经理 |
| 62 | 变更评审 | 2020-03-19 → 2020-04-27 A (+39d) | 2020-03-19 → 2020-04-27 A (+39d) | 1d? → 1d | 0% → 100% | none → 61 | resources none → 设计专家; 项目经理 |
| 63 | 例会 | 2020-03-19 → 2020-04-28 A (+40d) | 2020-03-19 → 2020-04-28 A (+40d) | 1d? → 1d | 0% → 100% | none → 40 | resources none → UI专家; 测试员1; 测试员2; 产品经理; 程序员1; 程序员2; 程序员3; 程序员4; 程序员5; 设计专家; 项目经理; 需求专家; 质量专家 |
| 64 | **管理干系人** | 2020-03-19 → 2020-04-29 A (+41d) | 2020-03-19 → 2020-05-01 A (+43d) | 1d? → 3d | 0% → 100% |  |  |
| 65 | 发布项目信息 | 2020-03-19 → 2020-04-29 A (+41d) | 2020-03-19 → 2020-04-29 A (+41d) | 1d? → 1d | 0% → 100% | none → 40 | resources none → 项目经理 |
| 66 | 报告监控指标 | 2020-03-19 → 2020-04-30 A (+42d) | 2020-03-19 → 2020-04-30 A (+42d) | 1d? → 1d | 0% → 100% | none → 40 | resources none → 项目经理 |
| 67 | 干系人沟通 | 2020-03-19 → 2020-05-01 A (+43d) | 2020-03-19 → 2020-05-01 A (+43d) | 1d? → 1d | 0% → 100% | none → 40 | resources none → 项目经理 |
| 68 | **团队建设** | 2020-03-19 → 2020-05-04 A (+46d) | 2020-03-20 → 2020-05-07 (+48d) | 2d? → 4d | 0% → 100% |  |  |
| 69 | 培训 | 2020-03-19 → 2020-05-04 A (+46d) | 2020-03-19 → 2020-05-04 A (+46d) | 1d? → 1d | 0% → 100% | none → 40 | resources none → UI专家; 测试员1; 测试员2; 程序员1; 程序员2; 程序员3; 程序员4; 程序员5; 设计专家; 需求专家; 质量专家 |
| 70 | 娱乐活动 | 2020-03-19 → 2020-05-05 A (+47d) | 2020-03-19 → 2020-05-05 A (+47d) | 1d? → 1d | 0% → 100% | none → 40 | resources none → UI专家; 测试员1; 测试员2; 产品经理; 程序员1; 程序员2; 程序员3; 程序员5; 设计专家; 项目经理; 需求专家; 质量专家 |

| ID | Task | Start | Finish | Duration | Complete | Predecessors | Other |
| --- | --- | --- | --- | --- | --- | --- | --- |
| 71 | 沟通 | 2020-03-19 → 2020-05-06 A (+48d) | 2020-03-19 → 2020-05-06 A (+48d) | 1d? → 1d | 0% → 100% | none → 40 | resources none → UI专家; 测试员1; 测试员2; 产品经理; 程序员1; 程序员2; 程序员3; 程序员4; 程序员5; 设计专家; 项目经理; 需求专家; 质量专家 |
| 72 | 项目验收 | 2020-03-19 → 2020-05-07 A (+49d) | 2020-03-19 → 2020-05-07 A (+49d) | 1d? → 1d | 0% → 100% | none → 41 | resources none → UI专家; 产品经理; 设计专家; 项目经理; 需求专家; 质量专家 |
| 73 | **收尾** | 2020-04-01 → 2020-05-11 A (+40d) | 2020-04-01 → 2020-05-12 A (+41d) | 1d? → 2d | 0% → 100% |  |  |
| 74 | 项目终检 | 2020-03-19 → 2020-05-11 A (+53d) | 2020-03-19 → 2020-05-11 A (+53d) | 1d? → 1d | 0% → 100% | none → 72 | resources none → UI专家; 产品经理; 设计专家; 项目经理; 需求专家; 质量专家 |
| 75 | 项目内部收尾 | 2020-03-19 → 2020-05-12 A (+54d) | 2020-03-19 → 2020-05-12 A (+54d) | 1d? → 1d | 0% → 100% | none → 72 | resources none → UI专家; 测试员1; 产品经理; 设计专家; 项目经理; 需求专家; 质量专家 |

## Version 4 (saved 2020-04-08, file 一研为定-成本规划.mpp)

Note of the change: grx add

Last finish stays 2020-05-12.

Changed:

| ID | Task | Finish |
| --- | --- | --- |
| 17 | 排列工作包顺序 | 2020-03-31 A → 2020-03-30 A (-1d) |

## Version 5 (saved 2020-04-28, file 一研为定-人力资源规划.mpp)

Note of the change: Merge branch 'master' of https://github.com/PeiYumeng/Project-management

Last finish stays 2020-05-12. Complete tasks 58 → 56.

Changed:

| ID | Task | Finish | Complete | Other |
| --- | --- | --- | --- | --- |
| 1 | **启动** |  | 100% → 67% |  |
| 2 | 任命项目经理 | 2020-03-19 A → 2020-03-20 (+1d) | 100% → 0% | resources 产品经理 → 裴雨萌 |
| 3 | 组建核心团队 | 2020-03-19 A → 2020-03-19 | 100% → 0% | resources UI专家; 测试员1; 测试员2; 产品经理; 程序员1; 程序员2; 程序员3; 程序员4; 程序员5; 设计专家; 项目经理; 需求专家; 质量专家 → 裴雨萌; 李爽; 郜瑞雪; 张卓; 张炳辰; 李建涛 |
| 4 | 制定里程碑计划 |  |  | resources 产品经理; 项目经理 → 裴雨萌 |
| 5 | 分析干系人 |  |  | resources 产品经理; 项目经理 → 裴雨萌 |
| 6 | 制定项目章程 |  |  | resources 产品经理; 项目经理 → 裴雨萌 |
| 7 | 项目启动大会 |  |  | resources 产品经理; 项目经理; 需求专家 → 裴雨萌; 张卓 |
| 10 | 制定需求说明书 |  |  | resources 需求专家 → 张卓 |
| 11 | 界面设计 |  |  | resources UI专家; 设计专家 → 张炳辰; 李爽 |
| 12 | 详细设计说明书 |  |  | resources 设计专家 → 张炳辰 |
| 13 | 范围说明书 |  |  | resources 项目经理 → 裴雨萌 |
| 14 | 创建WBS |  |  | resources 项目经理 → 裴雨萌 |
| 15 | 形成范围基准 |  |  | resources 项目经理 → 裴雨萌 |
| 17 | 排列工作包顺序 |  |  | resources 项目经理 → 裴雨萌 |
| 18 | 估算资源 |  |  | resources 项目经理 → 裴雨萌 |
| 19 | 估算持续时间 |  |  | resources 项目经理 → 裴雨萌 |
| 20 | 制定进度计划 |  |  | resources 项目经理 → 裴雨萌 |
| 21 | 形成进度基准 |  |  | resources 项目经理 → 裴雨萌 |
| 23 | 项目成本估算 |  |  | resources 项目经理 → 裴雨萌 |
| 24 | 项目预算 |  |  | resources 项目经理 → 裴雨萌 |
| 25 | 形成范围基准 |  |  | resources 项目经理 → 裴雨萌 |
| 27 | 制定测试计划 |  |  | resources 质量专家 → 张卓 |
| 28 | 制定测试用例 |  |  | resources 质量专家 → 张卓 |
| 30 | 制定人力资源计划 |  |  | resources 项目经理 → 裴雨萌 |
| 31 | 制定人员配备管理计划 |  |  | resources 项目经理 → 裴雨萌 |
| 33 | 制定沟通管理计划 |  |  | resources 项目经理 → 裴雨萌 |
| 35 | 识别风险 |  |  | resources 项目经理 → 裴雨萌 |
| 36 | 风险分析 |  |  | resources 项目经理 → 裴雨萌 |
| 37 | 制定风险登记册 |  |  | resources 项目经理 → 裴雨萌 |
| 38 | 规划整合 |  |  | resources 项目经理 → 裴雨萌 |
| 40 | 组建项目团队 |  |  | resources UI专家; 测试员1; 测试员2; 产品经理; 程序员1; 程序员2; 程序员3; 程序员4; 程序员5; 设计专家; 项目经理; 需求专家; 质量专家 → 张卓; 张炳辰; 裴雨萌; 李爽; 李建涛; 郜瑞雪 |
| 43 | 注册登录 |  |  | resources 程序员1 → 裴雨萌 |
| 44 | 院校专业查询 |  |  | resources 程序员2 → 张炳辰; 李建涛 |
| 45 | 每日打卡 |  |  | resources 程序员3 → 郜瑞雪 |
| 46 | 考研自习室 |  |  | resources 程序员3 → 郜瑞雪 |
| 47 | 考研资料库 |  |  | resources 程序员4 → 郜瑞雪 |
| 48 | 用户答疑 |  |  | resources 程序员4 → 郜瑞雪 |
| 49 | 网课学习 |  |  | resources 程序员4 → 郜瑞雪 |
| 50 | 社区文章 |  |  | resources 程序员5 → 李爽; 张卓 |
| 51 | 社区问答 |  |  | resources 程序员5 → 李爽; 张卓 |
| 52 | 添加文章问答 |  |  | resources 程序员5 → 张卓; 李爽 |
| 53 | 文章问答回复 |  |  | resources 程序员5 → 张卓; 李爽 |
| 54 | 个人中心信息 |  |  | resources 程序员1 → 裴雨萌 |
| 55 | 个人数据 |  |  | resources 程序员1 → 裴雨萌 |
| 57 | 数据分析 |  |  | resources 程序员1 → 张炳辰 |
| 58 | 信息资料收集 |  |  | resources 程序员1 → 张炳辰 |
| 60 | 各项指标监控 |  |  | resources 测试员1; 产品经理; 项目经理 → 张卓; 裴雨萌 |
| 61 | 监控评审 |  |  | resources 设计专家; 项目经理 → 张炳辰; 裴雨萌 |
| 62 | 变更评审 |  |  | resources 设计专家; 项目经理 → 裴雨萌; 张炳辰 |
| 63 | 例会 |  |  | resources UI专家; 测试员1; 测试员2; 产品经理; 程序员1; 程序员2; 程序员3; 程序员4; 程序员5; 设计专家; 项目经理; 需求专家; 质量专家 → 张卓; 张炳辰; 裴雨萌; 李爽; 李建涛; 郜瑞雪 |
| 65 | 发布项目信息 |  |  | resources 项目经理 → 裴雨萌 |
| 66 | 报告监控指标 |  |  | resources 项目经理 → 裴雨萌 |
| 67 | 干系人沟通 |  |  | resources 项目经理 → 裴雨萌 |
| 69 | 培训 |  |  | resources UI专家; 测试员1; 测试员2; 程序员1; 程序员2; 程序员3; 程序员4; 程序员5; 设计专家; 需求专家; 质量专家 → 张卓; 张炳辰; 裴雨萌; 李爽; 李建涛; 郜瑞雪 |
| 70 | 娱乐活动 |  |  | resources UI专家; 测试员1; 测试员2; 产品经理; 程序员1; 程序员2; 程序员3; 程序员5; 设计专家; 项目经理; 需求专家; 质量专家 → 张卓; 张炳辰; 裴雨萌; 李爽; 李建涛; 郜瑞雪 |
| 71 | 沟通 |  |  | resources UI专家; 测试员1; 测试员2; 产品经理; 程序员1; 程序员2; 程序员3; 程序员4; 程序员5; 设计专家; 项目经理; 需求专家; 质量专家 → 郜瑞雪; 李建涛; 李爽; 裴雨萌; 张炳辰; 张卓 |
| 72 | 项目验收 |  |  | resources UI专家; 产品经理; 设计专家; 项目经理; 需求专家; 质量专家 → 张卓; 张炳辰; 裴雨萌; 李爽 |
| 74 | 项目终检 |  |  | resources UI专家; 产品经理; 设计专家; 项目经理; 需求专家; 质量专家 → 张卓; 张炳辰; 裴雨萌; 李爽 |
| 75 | 项目内部收尾 |  |  | resources UI专家; 测试员1; 产品经理; 设计专家; 项目经理; 需求专家; 质量专家 → 李爽; 裴雨萌; 张炳辰; 张卓 |

## Version 6 (saved 2020-04-28, file 一研为定.mpp)

Note of the change: add

Last finish 2020-05-12 → 2020-05-13 (+1d). Complete tasks 56 → 45.

Changed:

| ID | Task | Finish | Duration | Complete | Other |
| --- | --- | --- | --- | --- | --- |
| 1 | **启动** |  |  | 67% → 100% |  |
| 2 | 任命项目经理 | 2020-03-20 → 2020-03-19 A (-1d) |  | 0% → 100% |  |
| 3 | 组建核心团队 | 2020-03-19 A |  | 0% → 100% | resources 裴雨萌; 李爽; 郜瑞雪; 张卓; 张炳辰; 李建涛 → 张炳辰; 裴雨萌; 李爽; 李建涛; 张卓; 郜瑞雪 |
| 11 | 界面设计 |  |  |  | resources 张炳辰; 李爽 → 李爽; 张炳辰 |
| 17 | 排列工作包顺序 | 2020-03-30 A → 2020-03-31 (+1d) |  |  |  |
| 39 | **执行与监控** | 2020-05-07 A → 2020-05-08 (+1d) | 18d → 18.75d | 100% → 77% |  |
| 40 | 组建项目团队 |  |  |  | resources 张卓; 张炳辰; 裴雨萌; 李爽; 李建涛; 郜瑞雪 → 李爽; 郜瑞雪; 李建涛; 裴雨萌; 张炳辰; 张卓 |
| 41 | **项目执行** | 2020-04-22 A → 2020-04-22 |  | 100% → 99% |  |
| 44 | 院校专业查询 |  |  |  | resources 张炳辰; 李建涛 → 张炳辰 |
| 45 | 每日打卡 |  |  |  | resources 郜瑞雪 → 李建涛 |
| 46 | 考研自习室 |  |  |  | resources 郜瑞雪 → 李建涛 |
| 50 | 社区文章 |  |  |  | resources 李爽; 张卓 → 李爽 |
| 51 | 社区问答 |  |  |  | resources 李爽; 张卓 → 李爽 |
| 52 | 添加文章问答 |  |  |  | resources 张卓; 李爽 → 李爽 |
| 53 | 文章问答回复 |  |  |  | resources 张卓; 李爽 → 李爽 |
| 56 | **管理员模块** | 2020-04-16 A → 2020-04-16 |  | 100% → 99% |  |
| 57 | 数据分析 | 2020-04-16 A → 2020-04-16 | 2d → 1.5d | 100% → 99% | resources 张炳辰 → 裴雨萌 |
| 58 | 信息资料收集 | 2020-04-16 A → 2020-04-16 | 2d → 1.5d | 100% → 99% | resources 张炳辰 → 裴雨萌 |
| 59 | **项目监控** | 2020-04-28 A → 2020-04-29 (+1d) | 4d → 4.75d | 100% → 25% |  |
| 60 | 各项指标监控 | 2020-04-23 A → 2020-04-23 |  | 100% → 25% | constraint as late as possible → none; resources 张卓; 裴雨萌 → 郜瑞雪; 裴雨萌 |
| 61 | 监控评审 | 2020-04-24 A → 2020-04-24 |  | 100% → 25% | constraint as late as possible → none |
| 62 | 变更评审 | 2020-04-27 A → 2020-04-27 |  | 100% → 25% | constraint as late as possible → none; resources 裴雨萌; 张炳辰 → 张炳辰; 裴雨萌 |
| 63 | 例会 | 2020-04-28 A → 2020-04-28 |  | 100% → 25% | resources 张卓; 张炳辰; 裴雨萌; 李爽; 李建涛; 郜瑞雪 → 李爽; 郜瑞雪; 李建涛; 裴雨萌; 张炳辰; 张卓 |
| 64 | **管理干系人** | 2020-05-01 A → 2020-05-01 |  | 100% → 99% |  |
| 65 | 发布项目信息 |  | 1d → 0.25d |  | constraint as late as possible → none |
| 66 | 报告监控指标 |  | 1d → 0.25d |  | constraint as late as possible → none |
| 67 | 干系人沟通 | 2020-05-01 A → 2020-05-01 | 1d → 0.25d | 100% → 99% |  |
| 68 | **团队建设** |  |  | 100% → 25% |  |
| 69 | 培训 | 2020-05-04 A → 2020-05-04 |  | 100% → 25% | constraint as late as possible → none; resources 张卓; 张炳辰; 裴雨萌; 李爽; 李建涛; 郜瑞雪 → 李爽; 郜瑞雪; 李建涛; 张炳辰; 张卓; 裴雨萌 |
| 70 | 娱乐活动 | 2020-05-05 A → 2020-05-05 |  | 100% → 25% | constraint as late as possible → none; resources 张卓; 张炳辰; 裴雨萌; 李爽; 李建涛; 郜瑞雪 → 李爽; 郜瑞雪; 李建涛; 裴雨萌; 张炳辰; 张卓 |
| 71 | 沟通 | 2020-05-06 A → 2020-05-06 |  | 100% → 25% | constraint as late as possible → none; resources 郜瑞雪; 李建涛; 李爽; 裴雨萌; 张炳辰; 张卓 → 李爽; 郜瑞雪; 李建涛; 裴雨萌; 张炳辰; 张卓 |
| 72 | 项目验收 | 2020-05-07 A → 2020-05-07 |  | 100% → 25% | constraint as late as possible → none; resources 张卓; 张炳辰; 裴雨萌; 李爽 → 李爽; 裴雨萌; 张卓; 张炳辰 |
| 73 | **收尾** | 2020-05-12 A → 2020-05-13 (+1d) | 2d → 2.75d | 100% → 25% |  |
| 74 | 项目终检 | 2020-05-11 A → 2020-05-11 |  | 100% → 25% | constraint as late as possible → none; resources 张卓; 张炳辰; 裴雨萌; 李爽 → 李爽; 裴雨萌; 张卓; 张炳辰 |
| 75 | 项目内部收尾 | 2020-05-12 A → 2020-05-12 |  | 100% → 25% | resources 李爽; 裴雨萌; 张炳辰; 张卓 → 李爽; 郜瑞雪; 裴雨萌; 张卓; 张炳辰 |

## Version 7 (saved 2020-04-28, file 一研为定-成本规划.mpp)

Note of the change: add

Last finish stays 2020-05-13.

Changed:

| ID | Task | Other |
| --- | --- | --- |
| 2 | 任命项目经理 | resources 裴雨萌 → 产品经理 |
| 3 | 组建核心团队 | resources 张炳辰; 裴雨萌; 李爽; 李建涛; 张卓; 郜瑞雪 → UI专家; 测试员1; 测试员2; 产品经理; 程序员1; 程序员2; 程序员3; 程序员4; 程序员5; 设计专家; 项目经理; 需求专家; 质量专家 |
| 4 | 制定里程碑计划 | resources 裴雨萌 → 产品经理; 项目经理 |
| 5 | 分析干系人 | resources 裴雨萌 → 产品经理; 项目经理 |
| 6 | 制定项目章程 | resources 裴雨萌 → 产品经理; 项目经理 |
| 7 | 项目启动大会 | resources 裴雨萌; 张卓 → 产品经理; 项目经理; 需求专家 |
| 10 | 制定需求说明书 | resources 张卓 → 需求专家 |
| 11 | 界面设计 | resources 李爽; 张炳辰 → UI专家; 设计专家 |
| 12 | 详细设计说明书 | resources 张炳辰 → 设计专家 |
| 13 | 范围说明书 | resources 裴雨萌 → 项目经理 |
| 14 | 创建WBS | resources 裴雨萌 → 项目经理 |
| 15 | 形成范围基准 | resources 裴雨萌 → 项目经理 |
| 17 | 排列工作包顺序 | resources 裴雨萌 → 项目经理 |
| 18 | 估算资源 | resources 裴雨萌 → 项目经理 |
| 19 | 估算持续时间 | resources 裴雨萌 → 项目经理 |
| 20 | 制定进度计划 | resources 裴雨萌 → 项目经理 |
| 21 | 形成进度基准 | resources 裴雨萌 → 项目经理 |
| 23 | 项目成本估算 | resources 裴雨萌 → 项目经理 |
| 24 | 项目预算 | resources 裴雨萌 → 项目经理 |
| 25 | 形成范围基准 | resources 裴雨萌 → 项目经理 |
| 27 | 制定测试计划 | resources 张卓 → 质量专家 |
| 28 | 制定测试用例 | resources 张卓 → 质量专家 |
| 30 | 制定人力资源计划 | resources 裴雨萌 → 项目经理 |
| 31 | 制定人员配备管理计划 | resources 裴雨萌 → 项目经理 |
| 33 | 制定沟通管理计划 | resources 裴雨萌 → 项目经理 |
| 35 | 识别风险 | resources 裴雨萌 → 项目经理 |
| 36 | 风险分析 | resources 裴雨萌 → 项目经理 |
| 37 | 制定风险登记册 | resources 裴雨萌 → 项目经理 |
| 38 | 规划整合 | resources 裴雨萌 → 项目经理 |
| 40 | 组建项目团队 | resources 李爽; 郜瑞雪; 李建涛; 裴雨萌; 张炳辰; 张卓 → UI专家; 测试员1; 测试员2; 产品经理; 程序员1; 程序员2; 程序员3; 程序员4; 程序员5; 设计专家; 项目经理; 需求专家; 质量专家 |
| 43 | 注册登录 | resources 裴雨萌 → 程序员1 |
| 44 | 院校专业查询 | resources 张炳辰 → 程序员2 |
| 45 | 每日打卡 | resources 李建涛 → 程序员3 |
| 46 | 考研自习室 | resources 李建涛 → 程序员3 |
| 47 | 考研资料库 | resources 郜瑞雪 → 程序员4 |
| 48 | 用户答疑 | resources 郜瑞雪 → 程序员4 |
| 49 | 网课学习 | resources 郜瑞雪 → 程序员4 |
| 50 | 社区文章 | resources 李爽 → 程序员5 |
| 51 | 社区问答 | resources 李爽 → 程序员5 |
| 52 | 添加文章问答 | resources 李爽 → 程序员5 |
| 53 | 文章问答回复 | resources 李爽 → 程序员5 |
| 54 | 个人中心信息 | resources 裴雨萌 → 程序员1 |
| 55 | 个人数据 | resources 裴雨萌 → 程序员1 |
| 57 | 数据分析 | resources 裴雨萌 → 程序员1 |
| 58 | 信息资料收集 | resources 裴雨萌 → 程序员1 |
| 60 | 各项指标监控 | resources 郜瑞雪; 裴雨萌 → 测试员1; 产品经理; 项目经理 |
| 61 | 监控评审 | resources 张炳辰; 裴雨萌 → 设计专家; 项目经理 |
| 62 | 变更评审 | resources 张炳辰; 裴雨萌 → 设计专家; 项目经理 |
| 63 | 例会 | resources 李爽; 郜瑞雪; 李建涛; 裴雨萌; 张炳辰; 张卓 → UI专家; 测试员1; 测试员2; 产品经理; 程序员1; 程序员2; 程序员3; 程序员4; 程序员5; 设计专家; 项目经理; 需求专家; 质量专家 |
| 65 | 发布项目信息 | resources 裴雨萌 → 项目经理 |
| 66 | 报告监控指标 | resources 裴雨萌 → 项目经理 |
| 67 | 干系人沟通 | resources 裴雨萌 → 项目经理 |
| 69 | 培训 | resources 李爽; 郜瑞雪; 李建涛; 张炳辰; 张卓; 裴雨萌 → UI专家; 测试员1; 测试员2; 程序员1; 程序员2; 程序员3; 程序员4; 程序员5; 设计专家; 需求专家; 质量专家 |
| 70 | 娱乐活动 | resources 李爽; 郜瑞雪; 李建涛; 裴雨萌; 张炳辰; 张卓 → UI专家; 测试员1; 测试员2; 产品经理; 程序员1; 程序员2; 程序员3; 程序员5; 设计专家; 项目经理; 需求专家; 质量专家 |
| 71 | 沟通 | resources 李爽; 郜瑞雪; 李建涛; 裴雨萌; 张炳辰; 张卓 → UI专家; 测试员1; 测试员2; 产品经理; 程序员1; 程序员2; 程序员3; 程序员4; 程序员5; 设计专家; 项目经理; 需求专家; 质量专家 |
| 72 | 项目验收 | resources 李爽; 裴雨萌; 张卓; 张炳辰 → UI专家; 产品经理; 设计专家; 项目经理; 需求专家; 质量专家 |
| 74 | 项目终检 | resources 李爽; 裴雨萌; 张卓; 张炳辰 → UI专家; 产品经理; 设计专家; 项目经理; 需求专家; 质量专家 |
| 75 | 项目内部收尾 | resources 李爽; 郜瑞雪; 裴雨萌; 张卓; 张炳辰 → UI专家; 测试员1; 产品经理; 设计专家; 项目经理; 需求专家; 质量专家 |
